# Increase Enrollment in MHV v2

Schedule from MS Project, 2014-08-08 to 2015-05-08, A marks actual dates.
Hewlett-Packard

## Calendars

- Standard: Mon-Fri 08:00-12:00, 13:00-17:00; Sat-Sun off.

## Schedule

| ID | WBS | Task | Type | Duration | Start | Finish | Predecessors | Complete | Remaining | Actual start | Total slack | Constraint | Text1 |
| --- | --- | --- | --- | --- | --- | --- | --- | --- | --- | --- | --- | --- | --- |
| 1 | 1 | **T4-0492 Increase Enrollment in MyHealtheVet Development** |  | 196d | 2014-08-08 | 2015-05-08 |  | 42% | 113.87d | 2014-08-18 |  |  |  |
| 2 | 1.1 | **Base Period (6 months)** |  | 125d | 2014-08-18 A | 2015-02-06 |  | 68% | 39.51d |  |  |  | 12 months |
| 3 | 1.1.1 | **Sprint 0 - Planning and Environment Setup** |  | 15d | 2014-08-18 A | 2014-09-05 A |  | 100% |  |  |  |  |  |
| 4 | 1.1.1.1 | Develop Contract Management Plan |  | 15d | 2014-08-18 A | 2014-09-05 A |  | 100% |  |  |  |  |  |
| 5 | 1.1.1.2 | Set up FTL Development & Test Environments |  | 15d | 2014-08-18 A | 2014-09-05 A |  | 100% |  |  |  |  |  |
| 6 | 1.1.1.3 | Complete VA Required Training |  | 15d | 2014-08-18 A | 2014-09-05 A |  | 100% |  |  |  |  |  |
| 7 | 1.1.1.4 | Obtain Clearance and Access |  | 15d | 2014-08-18 A | 2014-09-05 A |  | 100% |  |  |  |  |  |
| 8 | 1.1.1.5 | Facilitate Requirement/Design Definition with VA SMEs |  | 15d | 2014-08-18 A | 2014-09-05 A |  | 100% |  |  |  |  |  |
| 9 | 1.1.1.6 | User Story Template Approval |  | 15d | 2014-08-18 A | 2014-09-05 A |  | 100% |  |  |  |  |  |
| 10 | 1.1.2 | **Sprint 1 - Development** |  | 20d | 2014-09-08 A | 2014-10-03 A | 3 | 100% |  |  |  |  |  |
| 11 | 1.1.2.1 | US#1 Modify VistA's PI for MHV Enrollment Alert |  | 10d | 2014-09-08 A | 2014-09-19 A |  | 100% |  |  |  |  |  |
| 12 | 1.1.2.2 | US#2 Modify VistA’s PI For MHV Enrollment Socialization Question & Responses | manual | 10d | 2014-09-22 A | 2014-10-03 A |  | 100% |  |  |  |  |  |
| 13 | 1.1.2.3 | Review Prototype Changes |  | 1d | 2014-10-03 A | 2014-10-03 A |  | 100% |  |  |  | start no earlier than 2014-10-03 |  |
| 14 | 1.1.3 | **Sprint 2 - Development** |  | 20d | 2014-10-06 A | 2014-10-31 A | 10 | 100% |  |  |  |  |  |
| 15 | 1.1.3.1 | US#3 Modify VistA’s PI For Three (3) MHV Enrollment Questions & Reason Codes |  | 20d | 2014-10-06 A | 2014-10-31 A |  | 100% |  |  |  |  |  |
| 16 | 1.1.3.2 | Review Prototype Changes |  | 1d | 2014-10-31 A | 2014-10-31 A |  | 100% |  |  |  | start no earlier than 2014-10-31 |  |
| 17 | 1.1.4 | **Sprint 3 - Development** |  | 20d | 2014-11-03 | 2014-11-28 | 14 |  |  |  | 0d |  |  |
| 18 | 1.1.4.1 | US#4 Modify VistA’s PI For MHV Enrollment Consistency Check |  | 10d | 2014-11-03 | 2014-11-14 |  |  |  |  | 10d | finish no earlier than 2014-11-14 |  |
| 19 | 1.1.4.2 | Final User Story Refinements | manual | 10d | 2014-11-17 | 2014-11-28 |  |  |  |  |  |  |  |
| 20 | 1.1.4.3 | Review Prototype Changes |  | 1d | 2014-11-28 | 2014-11-28 |  |  |  |  | 0d | start no earlier than 2014-11-28 |  |
| 21 | 1.1.5 | **Sprint 4 - Testing** |  | 20d | 2014-12-01 | 2014-12-26 | 17 |  |  |  | 0d |  |  |
| 22 | 1.1.5.1 | Component and Integration Testing | manual | 5d | 2014-12-01 | 2014-12-05 |  |  |  |  |  |  |  |
| 23 | 1.1.5.2 | Conduct Formal Prototype UFT | manual | 10d | 2014-12-08 | 2014-12-19 |  |  |  |  |  |  |  |
| 24 | 1.1.5.3 | Make Changes From Formal Prototype UFT |  | 5d | 2014-12-22 | 2014-12-26 | 23 |  |  |  | 15d |  |  |

| ID | WBS | Task | Type | Duration | Start | Finish | Predecessors | Total slack | Constraint | Text1 |
| --- | --- | --- | --- | --- | --- | --- | --- | --- | --- | --- |
| 25 | 1.1.6 | **Sprint 5 - Correct Deficiencies** |  | 15d | 2015-01-19 | 2015-02-06 |  |  |  |  |
| 26 | 1.1.6.1 | Correct Final Deficiencies & Update Collaborative Package |  | 15d | 2015-01-19 | 2015-02-06 | 21 | 0d |  | 3 months |
| 27 | 1.1.6.2 | Final Prototype Demonstration & Collaborative Package Delivery |  | 5d | 2015-02-02 | 2015-02-06 |  | 0d | start no earlier than 2015-02-02 |  |
| 28 | 1.2 | **Optional Task (3 months)** |  | 60d | 2015-02-09 | 2015-05-01 |  |  |  | 6 months |
| 29 | 1.2.1 | Support External Certification Testing | manual | 60d | 2015-02-09 | 2015-05-01 | 27 |  |  |  |
| 30 | 1.2.2 | Support Deployment as necessary | manual | 60d | 2015-02-09 | 2015-05-01 | 29SS |  |  |  |
